Schedule from OmniPlan.
Project start 2019-02-04

## Resources

| Resource | Group | Rate |
| --- | --- | --- |
| Resource 1 | staff |  |
| Equipment 1 | equipment |  |
| Material 1 | material |  |
| Group 1 | group |  |
| Piak | staff | 50 |
| Nic | staff |  |
| Za | staff |  |
| Neung | staff |  |

## Schedule

| ID | WBS | Task | Duration | Predecessors | Complete | Constraint | Resources | Work | Actual work |
| --- | --- | --- | --- | --- | --- | --- | --- | --- | --- |
| 1 | 1 | **Initiation** |  |  |  | start no earlier than 2019-02-01 |  |  |  |
| 2 | 1.1 | Define specification |  |  |  | start no earlier than 2019-02-04 | Piak; Nic; Za; Neung | 16h |  |
| 3 | 1.2 | Generate concept |  | 2 |  | start no earlier than 2019-02-06 | Piak; Nic; Za; Neung | 16h |  |
| 4 | 1.3 | Scope defined |  | 3 |  | start no earlier than 2019-02-08 | Piak; Za | 8h |  |
| 5 | 2 | **Development** |  |  |  | start no earlier than 2019-02-11 |  |  |  |
| 6 | 2.1 | **Develop Hardware** |  |  |  | start no earlier than 2019-02-11 |  |  |  |
| 7 | 2.1.1 | Prototype(Smart/Stupid) 1 |  | 4 |  | start no earlier than 2019-02-11 | Piak; Za | 40h |  |
| 8 | 2.1.2 | Prototype(Smart/Stupid) 2 | 4.5d | 7 |  | start no earlier than 2019-02-18 | Piak [111.11%] | 40h |  |
| 9 | 2.1.3 | Prototype(Smart/Stupid) 3 |  | 8 |  | start no earlier than 2019-02-25 | Piak; Za | 40h |  |
| 10 | 2.1.4 | Prototype(Smart/Stupid) 4 |  | 9 |  | start no earlier than 2019-03-04 | Piak; Za | 40h |  |
| 11 | 2.1.5 | Prototype(Smart/Stupid) 5 |  | 10 |  | start no earlier than 2019-03-11 | Piak; Za | 40h |  |
| 12 | 2.1.6 | Prototype(Smart/Stupid) 6 |  | 11 |  | start no earlier than 2019-03-18 | Piak; Za | 40h |  |
| 13 | 2.1.7 | Prototype(Smart/Stupid) 7 |  | 12 |  | start no earlier than 2019-03-25 | Piak; Za | 40h |  |
| 14 | 2.1.8 | **Prototype(Smart/Stupid) 8** |  | 13 |  | start no earlier than 2019-04-08 |  |  |  |
| 15 | 2.1.8.1 | **Software** |  |  |  | start no earlier than 2019-04-08 |  |  |  |
| 16 | 2.1.8.1.1 | Optimize source code | 1d |  | 100% | start no earlier than 2019-04-08 | Za | 8h | 8h |
| 17 | 2.1.8.1.2 | create code for timer and auto dimming | 1d | 16 | 40% |  | Za [66.67%]; Piak [66.67%] | 8h | 3.2h |
| 18 | 2.1.8.1.3 | Test code with new PCBA | 2d | 17 | 40% |  | Piak [66.67%]; Za [66.67%] | 16h | 6.4h |
| 19 | 2.1.8.2 | **PCBA prototype** |  |  |  | start no earlier than 2019-04-08 |  |  |  |
| 20 | 2.1.8.2.1 | Receive PCBA | 1d |  | 100% | start no earlier than 2019-04-08 | Piak [66.67%]; Za [66.67%] | 8h | 8h |
| 21 | 2.1.8.2.2 | PCB verification | 1d | 20 |  | start no earlier than 2019-04-09 | Piak [66.67%]; Za [66.67%] | 8h |  |
| 22 | 2.1.8.2.3 | Functional test | 1d | 17, 21 |  |  | Piak [66.67%]; Za [66.67%] | 8h |  |
| 23 | 2.1.8.2.4 | Product sample assembly | 1d | 22 |  |  | Piak [66.67%]; Za [66.67%] | 8h |  |
| 24 | 2.1.9 | **Prototype(Smart/Stupid) 9** |  |  |  | start no earlier than 2019-04-22 |  |  |  |
| 25 | 2.1.9.1 | **PCBA prototype** |  | 23 |  | start no earlier than 2019-04-24 |  |  |  |
| 26 | 2.1.9.1.1 | Receive PCBA | 1d |  | 100% |  | Piak [66.67%]; Za [66.67%] | 8h | 8h |
| 27 | 2.1.9.1.2 | PCB verification | 1d | 26SS | 100% |  | Piak [66.67%]; Za [66.67%] | 8h | 8h |
| 28 | 2.1.9.1.3 | Functional test | 2d | 27SS | 100% |  | Piak [66.67%]; Za [66.67%] | 16h | 16h |
| 29 | 2.1.9.1.4 | Product sample assembly | 1d | 28 | 100% |  | Piak [66.67%]; Za [66.67%] | 8h | 8h |

Notes:
- 14: - Change MCU ATMEGA328(23IO) to ATMEGA16(32IO)
- 25: - Change MCU ATMEGA16L(IO32, 1kB of SRAM) to ATMEGA32L(32IO,2kB of SRAM) / - Fixed Power control unit / - Modified Control-Trac circuit to Active-low mode

| ID | WBS | Task | Duration | Predecessors | Complete | Constraint | Resources | Work | Actual work |
| --- | --- | --- | --- | --- | --- | --- | --- | --- | --- |
| 30 | 2.1.9.2 | **Software** |  |  |  |  |  |  |  |
| 31 | 2.1.9.2.1 | Optimize source code | 1d |  | 100% |  | Za | 8h | 8h |
| 32 | 2.1.9.2.2 | Create and debug code | 3d | 31 | 100% |  | Za [66.67%]; Piak [66.67%] | 24h | 24h |
| 33 | 2.1.9.2.3 | Test code with new PCBA | 1d | 32 | 100% |  | Piak [66.67%]; Za [66.67%] | 8h | 8h |
| 34 | 2.1.10 | **Prototype(Smart/Stupid) 10** |  |  |  | start no earlier than 2019-04-26 |  |  |  |
| 35 | 2.1.10.1 | **PCBA prototype** |  | 23 |  |  |  |  |  |
| 36 | 2.1.10.1.1 | Assemble development prototype | 2d |  |  |  | Piak [33.33%]; Za [33.33%] | 8h |  |
| 37 | 2.1.10.1.2 | Make PCBA prototype | 4d |  |  |  | Piak [16.67%]; Za [16.67%] | 8h |  |
| 38 | 2.1.10.1.3 | PCB verification | 1d |  |  | start no earlier than 2019-05-01 | Piak [66.67%]; Za [66.67%] | 8h |  |
| 39 | 2.1.10.1.4 | Receive PCBA prototype | 1d | 38SS |  |  | Piak [66.67%]; Za [66.67%] | 8h |  |
| 40 | 2.1.10.1.5 | PCB verification | 1d | 39SS |  | start no earlier than 2019-05-01 | Piak [66.67%]; Za [66.67%] | 8h |  |
| 41 | 2.1.10.1.6 | Product sample assembly | 1d | 40 |  |  | Piak [66.67%]; Za [66.67%] | 8h |  |
| 42 | 2.1.10.2 | **Software** |  |  |  |  |  |  |  |
| 43 | 2.1.10.2.1 | Optimize source code | 1d |  |  | start no earlier than 2019-04-29 | Za | 8h |  |
| 44 | 2.1.10.2.2 | Create and debug code | 2d | 43, 36 |  |  | Za; Piak | 24h |  |
| 45 | 2.1.10.2.3 | Test code with new PCBA | 1d | 44 |  |  | Piak [66.67%]; Za [66.67%] | 8h |  |
| 46 | 2.1.11 | Create specification |  | 45, 41 |  | start no earlier than 2019-05-03 | Piak; Za | 40h |  |
| 47 | 2.2 | **Develop Software** |  |  |  |  |  |  |  |
| 48 | 2.2.1 | Firmware design |  | 4 |  |  | Za; Nic; Piak | 200h |  |
| 49 | 2.2.2 | **Single instance deployment** |  |  |  | start no earlier than 2019-04-03 |  |  |  |
| 50 | 2.2.2.1 | Backend Architecture |  |  |  |  | Nic; Za; Piak | 200h |  |
| 51 | 2.2.2.2 | Security testing and analysis |  | 50 |  |  | Nic; Za; Piak | 8h |  |
| 52 | 2.2.2.3 | testing and improvement |  | 51 |  |  | Nic; Za; Piak | 200h |  |
| 53 | 2.2.3 | kubernetes swarm deployment (design for stability) |  | 52 |  |  | Nic; Za | 160h |  |

Notes:
- 30: - Debug current code to support ATMEGA32L
- 32: Debug on Prototype8(AT16) while waiting new PCBA
- 35: - Change MCU ATMEGA32L(32IO,2kB of SRAM) to ATMEGA328L(23IO,2kB of SRAM) / - cancel 4 LED I/O of Timer and display on 7-segment instead / - cancel Plasma function(get more 2 I/O pins)
- 42: - Debug current code for ATMEGA328L
- 44: Debug on Prototype10(AT328) while waiting new PCBA
- 50: include MQTT server, database, control/authetication

| ID | WBS | Task | Type | Predecessors | Constraint | Resources | Work |
| --- | --- | --- | --- | --- | --- | --- | --- |
| 54 | 2.3 | **Frontend development** |  |  | start no earlier than 2019-04-03 |  |  |
| 55 | 2.3.1 | ios |  |  | start no earlier than 2019-04-03 | Nic; Za; Piak | 160h |
| 56 | 2.3.2 | android |  |  | start no earlier than 2019-04-03 | Nic; Za; Piak | 160h |
| 57 | 2.3.3 | web |  |  | start no earlier than 2019-04-03 | Nic; Za; Piak | 160h |
| 58 | 3 | **Hardware Testing** |  |  |  |  |  |
| 59 | 3.1 | System test |  | 49 |  | Piak; Za | 144h |
| 60 | 3.2 | Performance test |  | 48, 59 |  | Piak; Za | 40h |
| 61 | 3.3 | Reliability test |  | 60 |  | Piak; Za | 160h |
| 62 | 4 | **Production launch** |  | 58 |  |  |  |
| 63 | 4.1 | Initial batch(pilot run) |  |  |  | Neung; Piak | 80h |
| 64 | 4.2 | Production Approve |  | 63 |  | Neung; Piak | 40h |
| 65 | 4.3 | Preparation to production |  | 64 |  | Neung; Piak | 40h |
| 66 | 4.4 | Production start | milestone | 65 |  |  |  |
