Schedule from MS Project XML, 2019-02-04 to 2019-06-28.

## Calendars

- Standard: Mon-Fri 08:00-12:00, 13:00-17:00; Sat-Sun off.

## Resources

| Resource | Rate |
| --- | --- |
| Piak | 50 |
| Nic |  |
| Za |  |
| Neung |  |

## Schedule

| ID | WBS | Task | Duration | Start | Finish | Predecessors | Complete | Constraint | Resources | Work | Actual work |
| --- | --- | --- | --- | --- | --- | --- | --- | --- | --- | --- | --- |
| 1 | 1 | **Initiation** | 4.67d | 2019-02-04 | 2019-02-08 |  |  | start no earlier than 2019-02-01 |  | 40h |  |
| 2 | 1.1 | Define specification | 0.57d | 2019-02-04 | 2019-02-04 |  |  | start no earlier than 2019-02-04 | Piak; Nic; Za; Neung | 16h |  |
| 3 | 1.2 | Generate concept | 0.57d | 2019-02-06 | 2019-02-06 | 2 |  | start no earlier than 2019-02-06 | Piak; Nic; Za; Neung | 16h |  |
| 4 | 1.3 | Scope defined | 0.67d | 2019-02-08 | 2019-02-08 | 3 |  | start no earlier than 2019-02-08 | Piak; Za | 8h |  |
| 5 | 2 | **Development** | 67.5d | 2019-02-11 | 2019-05-15 |  | 5% | start no earlier than 2019-02-11 |  | 1800h | 105.6h |
| 6 | 2.1 | **Develop Hardware** | 63.33d | 2019-02-11 | 2019-05-09 |  | 19% | start no earlier than 2019-02-11 |  | 552h | 105.6h |
| 7 | 2.1.1 | Prototype(Smart/Stupid) 1 | 3.33d | 2019-02-11 | 2019-02-14 | 4 |  | start no earlier than 2019-02-11 | Piak; Za | 40h |  |
| 8 | 2.1.2 | Prototype(Smart/Stupid) 2 | 4.5d | 2019-02-18 | 2019-02-22 | 7 |  | start no earlier than 2019-02-18 | Piak [111.11%] | 40h |  |
| 9 | 2.1.3 | Prototype(Smart/Stupid) 3 | 3.33d | 2019-02-25 | 2019-02-28 | 8 |  | start no earlier than 2019-02-25 | Piak; Za | 40h |  |
| 10 | 2.1.4 | Prototype(Smart/Stupid) 4 | 3.33d | 2019-03-04 | 2019-03-07 | 9 |  | start no earlier than 2019-03-04 | Piak; Za | 40h |  |
| 11 | 2.1.5 | Prototype(Smart/Stupid) 5 | 3.33d | 2019-03-11 | 2019-03-14 | 10 |  | start no earlier than 2019-03-11 | Piak; Za | 40h |  |
| 12 | 2.1.6 | Prototype(Smart/Stupid) 6 | 3.33d | 2019-03-18 | 2019-03-21 | 11 |  | start no earlier than 2019-03-18 | Piak; Za | 40h |  |
| 13 | 2.1.7 | Prototype(Smart/Stupid) 7 | 3.33d | 2019-03-25 | 2019-03-28 | 12 |  | start no earlier than 2019-03-25 | Piak; Za | 40h |  |
| 14 | 2.1.8 | **Prototype(Smart/Stupid) 8** | 4d | 2019-04-08 | 2019-04-11 | 13 | 40% | start no earlier than 2019-04-08 |  | 64h | 25.6h |
| 15 | 2.1.8.1 | **Software** | 4d | 2019-04-08 | 2019-04-11 |  | 55% | start no earlier than 2019-04-08 |  | 32h | 17.6h |
| 16 | 2.1.8.1.1 | Optimize source code | 1d | 2019-04-08 | 2019-04-08 |  | 100% | start no earlier than 2019-04-08 | Za | 8h | 8h |
| 17 | 2.1.8.1.2 | create code for timer and auto dimming | 1d | 2019-04-09 | 2019-04-09 | 16 | 40% |  | Za [66.67%]; Piak [66.67%] | 8h | 3.2h |
| 18 | 2.1.8.1.3 | Test code with new PCBA | 2d | 2019-04-10 | 2019-04-11 | 17 | 40% |  | Piak [66.67%]; Za [66.67%] | 16h | 6.4h |
| 19 | 2.1.8.2 | **PCBA prototype** | 4d | 2019-04-08 | 2019-04-11 |  | 25% | start no earlier than 2019-04-08 |  | 32h | 8h |
| 20 | 2.1.8.2.1 | Receive PCBA | 1d | 2019-04-08 | 2019-04-08 |  | 100% | start no earlier than 2019-04-08 | Piak [66.67%]; Za [66.67%] | 8h | 8h |
| 21 | 2.1.8.2.2 | PCB verification | 1d | 2019-04-09 | 2019-04-09 | 20 |  | start no earlier than 2019-04-09 | Piak [66.67%]; Za [66.67%] | 8h |  |
| 22 | 2.1.8.2.3 | Functional test | 1d | 2019-04-10 | 2019-04-10 | 17, 21 |  |  | Piak [66.67%]; Za [66.67%] | 8h |  |
| 23 | 2.1.8.2.4 | Product sample assembly | 1d | 2019-04-11 | 2019-04-11 | 22 |  |  | Piak [66.67%]; Za [66.67%] | 8h |  |
| 24 | 2.1.9 | **Prototype(Smart/Stupid) 9** | 5d | 2019-04-22 | 2019-04-26 |  | 100% | start no earlier than 2019-04-22 |  | 80h | 80h |
| 25 | 2.1.9.1 | **PCBA prototype** | 3d | 2019-04-24 | 2019-04-26 | 23 | 100% | start no earlier than 2019-04-24 |  | 40h | 40h |
| 26 | 2.1.9.1.1 | Receive PCBA | 1d | 2019-04-24 | 2019-04-24 |  | 100% |  | Piak [66.67%]; Za [66.67%] | 8h | 8h |
| 27 | 2.1.9.1.2 | PCB verification | 1d | 2019-04-24 | 2019-04-24 | 26SS | 100% |  | Piak [66.67%]; Za [66.67%] | 8h | 8h |
| 28 | 2.1.9.1.3 | Functional test | 2d | 2019-04-24 | 2019-04-25 | 27SS | 100% |  | Piak [66.67%]; Za [66.67%] | 16h | 16h |
| 29 | 2.1.9.1.4 | Product sample assembly | 1d | 2019-04-26 | 2019-04-26 | 28 | 100% |  | Piak [66.67%]; Za [66.67%] | 8h | 8h |

Notes:
- 14: - Change MCU ATMEGA328(23IO) to ATMEGA16(32IO)
- 25: - Change MCU ATMEGA16L(IO32, 1kB of SRAM) to ATMEGA32L(32IO,2kB of SRAM) / - Fixed Power control unit / - Modified Control-Trac circuit to Active-low mode

| ID | WBS | Task | Duration | Start | Finish | Predecessors | Complete | Constraint | Resources | Work | Actual work |
| --- | --- | --- | --- | --- | --- | --- | --- | --- | --- | --- | --- |
| 30 | 2.1.9.2 | **Software** | 5d | 2019-04-22 | 2019-04-26 |  | 100% |  |  | 40h | 40h |
| 31 | 2.1.9.2.1 | Optimize source code | 1d | 2019-04-22 | 2019-04-22 |  | 100% |  | Za | 8h | 8h |
| 32 | 2.1.9.2.2 | Create and debug code | 3d | 2019-04-23 | 2019-04-25 | 31 | 100% |  | Za [66.67%]; Piak [66.67%] | 24h | 24h |
| 33 | 2.1.9.2.3 | Test code with new PCBA | 1d | 2019-04-26 | 2019-04-26 | 32 | 100% |  | Piak [66.67%]; Za [66.67%] | 8h | 8h |
| 34 | 2.1.10 | **Prototype(Smart/Stupid) 10** | 5d | 2019-04-29 | 2019-05-03 |  |  | start no earlier than 2019-04-26 |  | 88h |  |
| 35 | 2.1.10.1 | **PCBA prototype** | 5d | 2019-04-29 | 2019-05-03 | 23 |  |  |  | 48h |  |
| 36 | 2.1.10.1.1 | Assemble development prototype | 2d | 2019-04-29 | 2019-04-30 |  |  |  | Piak [33.33%]; Za [33.33%] | 8h |  |
| 37 | 2.1.10.1.2 | Make PCBA prototype | 4d | 2019-04-29 | 2019-05-02 |  |  |  | Piak [16.67%]; Za [16.67%] | 8h |  |
| 38 | 2.1.10.1.3 | PCB verification | 1d | 2019-05-02 | 2019-05-02 |  |  | start no earlier than 2019-05-01 | Piak [66.67%]; Za [66.67%] | 8h |  |
| 39 | 2.1.10.1.4 | Receive PCBA prototype | 1d | 2019-05-02 | 2019-05-02 | 38SS |  |  | Piak [66.67%]; Za [66.67%] | 8h |  |
| 40 | 2.1.10.1.5 | PCB verification | 1d | 2019-05-02 | 2019-05-02 | 39SS |  | start no earlier than 2019-05-01 | Piak [66.67%]; Za [66.67%] | 8h |  |
| 41 | 2.1.10.1.6 | Product sample assembly | 1d | 2019-05-03 | 2019-05-03 | 40 |  |  | Piak [66.67%]; Za [66.67%] | 8h |  |
| 42 | 2.1.10.2 | **Software** | 4d | 2019-04-30 | 2019-05-03 |  |  |  |  | 40h |  |
| 43 | 2.1.10.2.1 | Optimize source code | 1d | 2019-04-30 | 2019-04-30 |  |  | start no earlier than 2019-04-29 | Za | 8h |  |
| 44 | 2.1.10.2.2 | Create and debug code | 2d | 2019-05-01 | 2019-05-02 | 43, 36 |  |  | Za; Piak | 24h |  |
| 45 | 2.1.10.2.3 | Test code with new PCBA | 1d | 2019-05-03 | 2019-05-03 | 44 |  |  | Piak [66.67%]; Za [66.67%] | 8h |  |
| 46 | 2.1.11 | Create specification | 3.33d | 2019-05-06 | 2019-05-09 | 45, 41 |  | start no earlier than 2019-05-03 | Piak; Za | 40h |  |
| 47 | 2.2 | **Develop Software** | 67.5d | 2019-02-11 | 2019-05-15 |  |  |  |  | 768h |  |
| 48 | 2.2.1 | Firmware design | 10d | 2019-02-11 | 2019-02-22 | 4 |  |  | Za; Nic; Piak | 200h |  |
| 49 | 2.2.2 | **Single instance deployment** | 20.5d | 2019-04-03 | 2019-05-01 |  |  | start no earlier than 2019-04-03 |  | 408h |  |
| 50 | 2.2.2.1 | Backend Architecture | 10d | 2019-04-03 | 2019-04-16 |  |  |  | Nic; Za; Piak | 200h |  |
| 51 | 2.2.2.2 | Security testing and analysis | 0.4d | 2019-04-17 | 2019-04-17 | 50 |  |  | Nic; Za; Piak | 8h |  |
| 52 | 2.2.2.3 | testing and improvement | 10d | 2019-04-17 | 2019-05-01 | 51 |  |  | Nic; Za; Piak | 200h |  |
| 53 | 2.2.3 | kubernetes swarm deployment (design for stability) | 10d | 2019-05-01 | 2019-05-15 | 52 |  |  | Nic; Za | 160h |  |

Notes:
- 30: - Debug current code to support ATMEGA32L
- 32: Debug on Prototype8(AT16) while waiting new PCBA
- 35: - Change MCU ATMEGA32L(32IO,2kB of SRAM) to ATMEGA328L(23IO,2kB of SRAM) / - cancel 4 LED I/O of Timer and display on 7-segment instead / - cancel Plasma function(get more 2 I/O pins)
- 42: - Debug current code for ATMEGA328L
- 44: Debug on Prototype10(AT328) while waiting new PCBA
- 50: include MQTT server, database, control/authetication

| ID | WBS | Task | Type | Duration | Start | Finish | Predecessors | Constraint | Resources | Work |
| --- | --- | --- | --- | --- | --- | --- | --- | --- | --- | --- |
| 54 | 2.3 | **Frontend development** |  | 8d | 2019-04-03 | 2019-04-12 |  | start no earlier than 2019-04-03 |  | 480h |
| 55 | 2.3.1 | ios |  | 8d | 2019-04-03 | 2019-04-12 |  | start no earlier than 2019-04-03 | Nic; Za; Piak | 160h |
| 56 | 2.3.2 | android |  | 8d | 2019-04-03 | 2019-04-12 |  | start no earlier than 2019-04-03 | Nic; Za; Piak | 160h |
| 57 | 2.3.3 | web |  | 8d | 2019-04-03 | 2019-04-12 |  | start no earlier than 2019-04-03 | Nic; Za; Piak | 160h |
| 58 | 3 | **Hardware Testing** |  | 28.71d | 2019-05-01 | 2019-06-11 |  |  |  | 344h |
| 59 | 3.1 | System test |  | 12d | 2019-05-01 | 2019-05-17 | 49 |  | Piak; Za | 144h |
| 60 | 3.2 | Performance test |  | 3.33d | 2019-05-17 | 2019-05-22 | 48, 59 |  | Piak; Za | 40h |
| 61 | 3.3 | Reliability test |  | 13.33d | 2019-05-22 | 2019-06-11 | 60 |  | Piak; Za | 160h |
| 62 | 4 | **Production launch** |  | 13.46d | 2019-06-11 | 2019-06-28 | 58 |  |  | 160h |
| 63 | 4.1 | Initial batch(pilot run) |  | 6.67d | 2019-06-11 | 2019-06-19 |  |  | Neung; Piak | 80h |
| 64 | 4.2 | Production Approve |  | 3.33d | 2019-06-19 | 2019-06-25 | 63 |  | Neung; Piak | 40h |
| 65 | 4.3 | Preparation to production |  | 3.33d | 2019-06-25 | 2019-06-28 | 64 |  | Neung; Piak | 40h |
| 66 | 4.4 | Production start | milestone | 0d | 2019-06-28 | 2019-06-28 | 65 |  |  |  |
